How a schedule from an exported table changed from version to version. A marks actual dates.

## Version 1 (saved 2026-10-29)

Note of the change: Add WellGTM product discovery and PM documentation

| ID | Task | Start | Finish |
| --- | --- | --- | --- |
| 1 | Horizon 1 — Prove (Lotte AX Challenge) | 2026-10-26 | 2027-04-09 |
| 2 | R0 Discovery & PM artefacts | 2026-10-26 | 2026-10-30 |
| 3 | M1 Data foundation (schema, pipeline, provenance, tariffs) | 2026-11-02 | 2026-11-13 |
| 4 | M2 Scoring, P(TOP3), presets, forecast engine | 2026-11-16 | 2026-11-27 |
| 5 | M3 API + dashboard MVP (KO/EN, warm-up) | 2026-11-30 | 2026-12-11 |
| 6 | M4 AI agent, verifier, regulation RAG, TOP3 report | 2026-12-14 | 2027-01-08 |
| 7 | R1.0 예선 demo-ready | 2027-01-08 | 2027-01-08 |
| 8 | M5 Monitoring: auth, daily refresh, alerts, simulation | 2027-01-11 | 2027-01-29 |
| 9 | M6 Evaluation reports, time-savings, proposal, video | 2027-02-01 | 2027-02-12 |
| 10 | R1.1 예선 submission (anticipated) | 2027-02-12 | 2027-02-12 |
| 11 | R2.0 본선 prototype: Lotte field data, product mapping | 2027-03-01 | 2027-04-02 |
| 12 | 본선 demo (anticipated) | 2027-04-09 | 2027-04-09 |
| 13 | Horizon 2 — Embed (pilot at Lotte Wellfood) | 2027-05-03 | 2027-11-30 |
| 14 | R3.0 Enterprise pilot: SSO, security review, internal sales connector | 2027-05-03 | 2027-07-30 |
| 15 | R3.1 Product × market × entry-mode economics (Pepero, ZERO, ice cream) | 2027-06-01 | 2027-08-27 |
| 16 | R4.0 Production rollout; used in annual market-priority review | 2027-09-01 | 2027-11-30 |
| 17 | R4.0 in production | 2027-11-30 | 2027-11-30 |
| 18 | Horizon 3 — Scale (multi-tenant SaaS) | 2028-01-03 | 2028-12-31 |
| 19 | R5.0 Multi-tenant SaaS beta; new categories; premium data connectors | 2028-01-03 | 2028-06-30 |
| 20 | R5.1 Export-support organisation pilot | 2028-04-03 | 2028-09-29 |
| 21 | R6.0 General availability | 2028-12-15 | 2028-12-15 |
| 22 | Client objective: Lotte overseas revenue share 35% (2028) | 2028-12-31 | 2028-12-31 |

## Version 2 (saved 2026-11-27)

Note of the change: Merge pull request #1 from skyyeom/feat/m1-pipeline

Last finish stays 2028-12-31.

Changed:

| ID | Task | Start | Finish | Other |
| --- | --- | --- | --- | --- |
| 3 | M1 Data foundation + automated ingestion (schema, scheduled pipeline, provenance, revisions) | 2026-11-02 → 2026-11-23 (+21d) | 2026-11-13 → 2026-12-04 (+21d) | was named M1 Data foundation (schema, pipeline, provenance, tariffs) |
| 4 | M2 Scoring, P(TOP3), presets, forecast engine | 2026-11-16 → 2026-12-07 (+21d) | 2026-11-27 → 2026-12-18 (+21d) |  |
| 5 | M3 API + dashboard MVP incl. Automation & Data Health page (KO/EN, warm-up) | 2026-11-30 → 2026-12-21 (+21d) | 2026-12-11 → 2027-01-08 (+28d) | was named M3 API + dashboard MVP (KO/EN, warm-up) |
| 6 | M4 AI agent, verifier, regulation RAG, TOP3 report | 2026-12-14 → 2027-01-11 (+28d) | 2027-01-08 → 2027-01-29 (+21d) |  |
| 7 | R1.0 예선 demo-ready | 2027-01-08 → 2027-01-29 (+21d) | 2027-01-08 → 2027-01-29 (+21d) |  |
| 8 | M5 Monitoring: auth, watchlists, anomalies, email, simulation | 2027-01-11 → 2027-02-01 (+21d) | 2027-01-29 → 2027-02-05 (+7d) | was named M5 Monitoring: auth, daily refresh, alerts, simulation |
| 9 | M6 Evaluation reports, time-savings, proposal, video | 2027-02-01 → 2027-02-08 (+7d) |  |  |
